# Gantt

How a schedule from MS Project changed from version to version. A marks actual dates.

## Version 1 (saved 2016-03-15)

Note of the change: Merge pull request #15 from mikethepurple/master

| ID | WBS | Task | Duration | Start | Finish | Predecessors | Total float |
| --- | --- | --- | --- | --- | --- | --- | --- |
| 1 | 1 | **Защита выпускной квалификационной работы** | 193.12d | 2016-01-10 | 2016-03-14 |  |  |
| 2 |  | Начало проекта | 0h | 2016-01-10 | 2016-01-10 |  | 193.12d |
| 3 | 1.2 | **Составление технического задания** | 54.88d | 2016-01-10 | 2016-01-28 |  | -2.5d |
| 4 |  | Обсуждение требований с заказчиком | 20h | 2016-01-10 | 2016-01-18 |  | -1.38d |
| 5 |  | Проработка требований | 10h | 2016-01-19 | 2016-01-20 | 4 | -1.62d |
| 6 |  | Разработка технического задания | 13h | 2016-01-21 | 2016-01-22 | 5 | -2.88d |
| 7 |  | Согласование технического задания с заказчиком | 2h | 2016-01-22 | 2016-01-28 | 6 | -5.12d |
| 8 |  | Окончание составления технического задания | 0h | 2016-01-28 | 2016-01-28 | 7 | -2.5d |
| 9 | 1.3 | **Разработка системы: спринт 1** | 25.38d? | 2016-01-28 | 2016-02-06 |  | -3d |
| 10 |  | Разработка модели | 3d? | 2016-01-28 | 2016-02-05 | 8 | -3d |
| 11 |  | Окончание спринта 1 | 1d? | 2016-02-05 | 2016-02-06 | 10 | -1.12d |
| 12 | 1.4 | **Разработка системы: спринт 2** | 24.88d? | 2016-02-09 | 2016-02-18 | 19 | -0.12d |
| 13 |  | Разработка модели системы | 20h | 2016-02-09 | 2016-02-17 |  | -2.75d |
| 14 |  | Окончание спринта 2 | 1d? | 2016-02-17 | 2016-02-18 | 13 | -0.12d |
| 15 | 1.5 | **Разработа системы: спринт 3** | 32.88d? | 2016-02-29 | 2016-03-11 | 20 | -5.88d |
| 16 |  | Разработка GUI | 50h | 2016-03-03 | 2016-03-11 | 17 | -2d |
| 17 |  | Разработка CLI | 1d? | 2016-02-29 | 2016-03-02 |  | -5.88d |
| 18 |  | Окончание спринта 3 | 1d? | 2016-03-11 | 2016-03-11 | 16 | -0.12d |
| 19 |  | Применен риск: недостаточно времени для освоения технологий | 1d? | 2016-02-06 | 2016-02-09 | 9 | -2.75d |
| 20 |  | Применен риск: недостаточно времени для освоения технологий | 1.25d? | 2016-02-26 | 2016-02-29 | 21 | -8.38d |
| 21 |  | Примерен риск: Ериков отсутствовал на проекте | 5.5d? | 2016-02-18 | 2016-02-26 | 12 | -2.38d |
| 22 | 1.9 | **Тестирование и отладка системы** | 67.12d | 2016-02-18 | 2016-03-11 |  | -0.12d |
| 23 |  | Тестирование и отладка модели системы | 6h | 2016-02-18 | 2016-02-18 | 14 | 63.25d |
| 24 |  | Тестирование и отладка интерфейса системы | 6h | 2016-03-11 | 2016-03-11 | 18SS | -0.12d |
| 25 |  | Окончание тестирования и отладки | 0h | 2016-03-11 | 2016-03-11 | 23, 24 | -0.12d |
| 26 | 1.10 | **Разработка документации** | 2.75d | 2016-03-11 | 2016-03-12 | 25 | -0.12d |
| 27 |  | Разработка пояснительной записки | 2h | 2016-03-11 | 2016-03-11 |  | -0.12d |
| 28 |  | Разработка руководства оператора | 2h | 2016-03-11 | 2016-03-12 | 27 | -2.12d |
| 29 |  | Разработка программы и методики испытаний | 1h | 2016-03-12 | 2016-03-12 | 28 | -0.12d |
| 30 |  | Разработка текста программы | 1h | 2016-03-12 | 2016-03-12 | 29 | -0.12d |
| 31 |  | Окончание разработки документации | 0h | 2016-03-12 | 2016-03-12 | 30 | -0.12d |
| 32 |  | Передача проекта заказчику | 2h | 2016-03-14 | 2016-03-14 | 31 | -6.25d |
| 33 |  | Окончание работы с проектом | 0d | 2016-03-14 | 2016-03-14 | 32 | -0.12d |

## Version 2 (saved 2016-03-15)

Note of the change: Merge remote-tracking branch 'upstream/master'

Last finish stays 2016-03-14.

Changed:

| ID | Task | Other |
| --- | --- | --- |
| 1 | **Выполнение коммандного проекта** | was named Защита выпускной квалификационной работы |
